# OpenModelica Development

Schedule from GanttProject, 2012-06-11 to 2012-12-12.
OSMC
Development Managment for / - FrontEnd / - BackEnd / - FMI

## Calendars

- Project calendar: Mon-Fri working; Sat-Sun off.

## Resources

| Resource |
| --- |
| PeterF |
| Bernhard |
| Adrain |
| Martin |
| Per |
| Adeel |
| Willi |
| Jens |
| Mahder |
| Niklas |
| Lennart |
| Alachew |
| others |
| ??? |

## Schedule

| ID | WBS | Task | Duration | Start | Finish | Predecessors | Complete | Resources |
| --- | --- | --- | --- | --- | --- | --- | --- | --- |
| 1 | 1 | **Frontend** | 20d | 2012-06-11 | 2012-07-06 |  | 1% |  |
| 2 | 1.1 | **New Instantiation completion** | 20d | 2012-06-11 | 2012-07-06 |  | 4% |  |
| 3 | 1.1.1 | Prefixing/subscripting of expressions | 7d | 2012-06-11 | 2012-06-19 |  |  | Per |
| 4 | 1.1.2 | Instantiation/typing of equations | 2d | 2012-06-11 | 2012-06-12 |  |  |  |
| 5 | 1.1.3 | Instantiation/typing of algorithms | 3d | 2012-06-11 | 2012-06-13 |  |  | Adrain |
| 6 | 1.1.4 | Instantiation/typing of functions | 3d | 2012-06-11 | 2012-06-13 |  | 100% |  |
| 7 | 1.1.5 | Connection handling, standard and expandable connections | 20d | 2012-06-11 | 2012-07-06 |  |  |  |
| 8 | 1.1.6 | Connection handling, connection breaking with connection graph update | 2d | 2012-06-11 | 2012-06-12 |  |  | Adrain |
| 9 | 1.1.7 | Function interpretation update for new instantiation and symbol table | 10d | 2012-06-11 | 2012-06-22 |  |  | Martin |
| 10 | 1.1.8 | Improve datatype support (enumerations, records) | 7d | 2012-06-11 | 2012-06-19 |  |  | Martin |
| 11 | 1.1.9 | Propagate variability information | 2d | 2012-06-11 | 2012-06-12 |  |  | Adrain |
| 12 | 1.1.10 | Further expansion improvements | 4d | 2012-06-11 | 2012-06-14 |  |  | Adrain [50%]; Per [50%] |
| 13 | 1.1.11 | Type checking and internal type casting | 7d | 2012-06-11 | 2012-06-19 |  |  | Adrain |
| 14 | 1.1.12 | Support Very-light Fluid subset from Kilian | 1d | 2012-06-11 | 2012-06-11 |  |  | Per |
| 15 | 1.1.13 | Full Support for Fluid library | 1d | 2012-06-11 | 2012-06-11 |  |  | Adrain; Martin; Per |
| 16 | 1.2 | **Finish Garbage collection (GC), Separate compilation, Updated MDT/OMDev** | 6d | 2012-06-11 | 2012-06-18 |  |  |  |
| 17 | 1.2.1 | Garbage collection (GC) with same performane as RML-based GC | 1d | 2012-06-11 | 2012-06-11 |  |  | Adrain |
| 18 | 1.2.2 | Separate compilation | 6d | 2012-06-11 | 2012-06-18 |  |  | Adrain |
| 19 | 1.2.3 | Deployment of GC and separate compilation in updated MDT/OMDEV | 3d | 2012-06-11 | 2012-06-13 |  |  | Adrain; Martin |
| 20 | 1.2.4 | GC with higher performance than RML-based GC | 1d | 2012-06-11 | 2012-06-11 |  |  | Adrain |
| 21 | 2 | **Backend** | 133d | 2012-06-11 | 2012-12-12 |  |  |  |
| 22 | 2.1 | **Backend Design** | 33d | 2012-06-11 | 2012-07-25 |  |  |  |
| 23 | 2.1.1 | Tech. Documentation (draft) | 14d | 2012-06-11 | 2012-06-28 |  |  | Willi; Jens |
| 24 | 2.1.2 | Tech. Documentation (final) | 10d | 2012-06-29 | 2012-07-12 | 23 |  | Willi; Jens |
| 25 | 2.1.3 | Create ideal flow and data chart | 14d | 2012-06-29 | 2012-07-18 | 23 |  |  |
| 26 | 2.1.4 | Tech. Doc. simulation c-runtime | 3d | 2012-06-11 | 2012-06-13 |  |  | Willi |
| 27 | 2.1.5 | Tech. Doc. simulation cpp-runtime | 3d | 2012-06-11 | 2012-06-13 |  |  | Niklas |
| 28 | 2.1.6 | Design ideal flow and data document | 5d | 2012-07-19 | 2012-07-25 | 24, 25, 26, 27 |  | Willi; Jens; Niklas; Lennart; others |

Notes:
- 12: equations, algorithms, functs, ... / phase before backend
- 22: Improve the readabilty of the code by / - restrukturing / - documentation / - reimplement prototype implementations
- 23: Creating a Tech. Documentation of the MetaModelica Backend with / - visual illustration flow chart / - and data flow
- 24: Creating a Tech. Documentation of the MetaModelica Backend with / - visual illustration flow chart / - and data flow
- 25: create or rather derive an ideal flow chart and data flow
- 28: search for potential improvements with created flow chart and data flow

| ID | WBS | Task | Duration | Start | Finish | Predecessors | Complete | Resources |
| --- | --- | --- | --- | --- | --- | --- | --- | --- |
| 29 | 2.2 | **Backend readability (Implmentation)** | 50d | 2012-06-11 | 2012-08-17 |  |  |  |
| 30 | 2.2.1 | Tearing as post-optim module | 2d | 2012-06-11 | 2012-06-12 |  |  | Jens |
| 31 | 2.2.2 | sparsity pattern as post-optim module | 2d | 2012-06-11 | 2012-06-12 |  |  | Willi |
| 32 | 2.2.3 | coloring as post-optim module | 2d | 2012-06-11 | 2012-06-12 |  |  | Willi |
| 33 | 2.2.4 | Restruct SImCode.mo and SIMCODE | 50d | 2012-06-11 | 2012-08-17 |  |  | Willi; Jens; Niklas; others |
| 34 | 2.2.5 | revise data-struct of the Incidence-Matrix | 3d | 2012-06-11 | 2012-06-13 |  |  | Jens |
| 35 | 2.2.6 | Merge differentiate Function | 10d | 2012-06-11 | 2012-06-22 |  |  |  |
| 36 | 2.3 | **Backend robustness and library support** | 60d | 2012-06-11 | 2012-08-31 |  |  |  |
| 37 | 2.3.1 | MultiBody library simulation | 15d | 2012-06-11 | 2012-06-29 |  |  | Jens |
| 38 | 2.3.2 | Figure out issues for simulate Media example | 5d | 2012-06-11 | 2012-06-15 |  |  | Willi |
| 39 | 2.3.3 | Make the Media library simulate | 15d | 2012-06-18 | 2012-07-06 | 38 |  | Willi |
| 40 | 2.3.4 | revise non-linear system handling | 10d | 2012-06-11 | 2012-06-22 |  |  | Willi |
| 41 | 2.3.5 | Figure out ThermoSysLib simulation issues | 3d | 2012-06-11 | 2012-06-13 |  | 30% | Willi |
| 42 | 2.3.6 | ThermoSysLib library simulation | 5d | 2012-06-14 | 2012-06-20 | 41 |  | Willi |
| 43 | 2.3.7 | solving stategie for algebraic loop involving integer | 60d | 2012-06-11 | 2012-08-31 |  |  | ??? |
| 44 | 2.3.8 | Make other MSL example model simulates | 1d | 2012-06-11 | 2012-06-11 |  |  | Willi |
| 45 | 2.3.9 | Find initialize issues for ThermoSys simulation | 25d | 2012-07-23 | 2012-08-24 | 49 |  | Willi [80%]; Lennart [20%] |
| 46 | 2.3.10 | Find initialize issues for MultiBody simulation | 10d | 2012-07-23 | 2012-08-03 | 49 |  | Willi [80%]; Lennart [20%] |
| 47 | 2.4 | **Backend performance** | 133d | 2012-06-11 | 2012-12-12 |  | 4% |  |
| 48 | 2.4.1 | Design and Implementation of a better tearing strategy | 40d | 2012-06-13 | 2012-08-07 | 30 |  | Bernhard; Willi; Jens |
| 49 | 2.4.2 | Improvement and Robostness of initialization | 30d | 2012-06-11 | 2012-07-20 |  |  | Lennart |
| 50 | 2.4.3 | Implement of Homotopy operator | 30d | 2012-06-11 | 2012-07-20 |  |  |  |
| 51 | 2.4.4 | Dynamic State Selection | 1d | 2012-06-11 | 2012-06-11 |  |  | Jens |
| 52 | 2.4.5 | Non-Expanded arrays | 100d | 2012-07-26 | 2012-12-12 | 28 |  |  |
| 53 | 2.4.6 | Compressed DASSL | 5d | 2012-06-13 | 2012-06-19 | 31, 32 |  | Willi |
| 54 | 2.4.7 | revise BackendDAEUtil.getSolvedSystem | 10d | 2012-06-11 | 2012-06-22 |  | 40% | Willi [50%]; Jens [50%] |
| 55 | 2.4.8 | reduce compile time of runtime | 5d | 2012-08-20 | 2012-08-24 | 33 |  | Willi; Jens |

Notes:
- 35: Merge MetaModelica code of Derive.mo and symbolic Jacobian calculation
- 54: functions expandDer, calculateValues, translateDAE, generateStatePartition, are slow or not well implementet....

| ID | WBS | Task | Duration | Start | Finish | Predecessors | Resources |
| --- | --- | --- | --- | --- | --- | --- | --- |
| 56 | 2.5 | **Other Things** | 30d | 2012-06-11 | 2012-07-20 |  |  |
| 57 | 2.5.1 | Finalize prototype uncertainty | 10d | 2012-06-11 | 2012-06-22 |  | others |
| 58 | 2.5.2 | Extend Test suite | 30d | 2012-06-11 | 2012-07-20 |  | Alachew |
| 59 | 3 | **FMI** | 55d | 2012-06-11 | 2012-08-24 |  |  |
| 60 | 3.1 | **FMI Comman Functionality** | 15d | 2012-06-11 | 2012-06-29 |  |  |
| 61 | 3.1.1 | Common header files, functions, platform depended definitions. | 5d | 2012-06-11 | 2012-06-15 |  | Adeel |
| 62 | 3.1.2 | XML parser, loading and validating the dynamic link library (dll/so). | 5d | 2012-06-18 | 2012-06-22 | 61 | Adeel |
| 63 | 3.1.3 | FMU Instances creation, logging. | 5d | 2012-06-25 | 2012-06-29 | 62 | Adeel |
| 64 | 3.2 | FMI-Unit for Co-Simulation | 7d | 2012-06-11 | 2012-06-19 |  | Willi |
| 65 | 3.3 | FMI 2.0 Implementation (partial prototype) | 30d | 2012-06-11 | 2012-07-20 |  | Adeel; Willi |
| 66 | 3.4 | FMI Master implementation (a) | 15d | 2012-07-02 | 2012-07-20 | 63, 64 | Adeel |
| 67 | 3.5 | FMI Master implementation (b) | 15d | 2012-07-23 | 2012-08-10 | 66 | Adeel [50%]; Willi [50%] |
| 68 | 3.6 | FMI Re-Implement FMI-Import for FMI1.0 Co-Simulation and FMI2.0 usage | 20d | 2012-06-11 | 2012-07-06 |  | Adeel |
| 69 | 3.7 | FMI Implementing communication algorithm between master and slaves. | 10d | 2012-08-13 | 2012-08-24 | 67 | Adeel [45%]; Willi [10%]; others [45%] |

Notes:
- 66: Creating, initializing, terminating and destructing the slaves.
- 67: Performing the step with the respective solvers of the slaves.
